# Gantt_ProjetDiscret

Schedule from MS Project, 2015-10-19 to 2016-03-18, status date 2015-12-18, 7 hours a day, costs in €, A marks actual dates.
UFR-SFA

## Calendars

- Standard: Mon-Fri 09:00-12:00, 14:00-18:00; Sat-Sun off. Exceptions (off unless hours are given): 2015-11-02 to 2015-11-13 (Cours 02/11 - 13/11), 2015-11-23 to 2015-12-11 (Cours 23/11 - 11/12), 2015-12-25 to 2016-01-01 (Vacances), 2016-01-04 to 2016-01-15 (Cours 04/01 - 15/01), 2016-02-01 to 2016-02-12 (Cours 01/02 - 12/02), 2016-02-29 to 2016-03-04 (Cours 29/02 - 04/03).

## Resources

| Resource | Rate |
| --- | --- |
| Zied | 21.43 |
| Thomas | 21.43 |
| Adrien | 21.43 |
| Lydie | 21.43 |

## Schedule

| ID | WBS | Task | Type | Duration | Start | Finish | Predecessors | Complete | Remaining | Total slack | Free slack | Constraint | Resources | Work | Actual work | Cost | Actual cost |
| --- | --- | --- | --- | --- | --- | --- | --- | --- | --- | --- | --- | --- | --- | --- | --- | --- | --- |
| 1 | 1 | A. Jalon début | milestone | 0d | 2015-10-19 A | 2015-10-19 A |  | 100% |  |  |  |  |  |  |  |  |  |
| 2 | 2 | 0. Rédaction cahier des charges |  | 10d | 2015-10-19 A | 2015-10-30 A | 1 | 100% |  |  |  |  | Adrien; Lydie; Thomas; Zied | 280h | 280h | 6,000 | 6,000 |
| 3 | 3 | B. Jalon début développement | milestone | 0d | 2015-10-30 A | 2015-10-30 A | 2 | 100% |  |  |  |  |  |  |  |  |  |
| 4 | 4 | 1. Documentation, aide utilisateur, tests |  | 34d | 2015-11-16 A | 2016-03-02 | 3 | 20% | 27.2d | 10d |  | finish no earlier than 2016-03-02 |  |  |  |  |  |
| 5 | 5 | **2. Conception** |  | 10d | 2015-11-16 A | 2015-12-18 A | 3 | 100% |  |  |  |  |  | 224h | 224h | 4,800 | 4,800 |
| 6 | 5.1 | 2.1 Etude du code |  | 2d | 2015-11-16 A | 2015-11-17 A | 3 | 100% |  |  |  |  | Adrien; Lydie; Thomas; Zied | 56h | 56h | 1,200 | 1,200 |
| 7 | 5.2 | 2.2 Conception de l'architecture |  | 4d | 2015-11-18 A | 2015-12-17 A | 6 | 100% |  |  |  |  | Adrien; Lydie; Thomas; Zied | 112h | 112h | 2,400 | 2,400 |
| 8 | 5.3 | 2.3 Refatoring |  | 2d | 2015-12-15 A | 2015-12-18 A | 7 | 100% |  |  |  |  | Adrien; Lydie; Thomas; Zied | 56h | 56h | 1,200 | 1,200 |
| 9 | 6 | C. Jalon Fin conception | milestone | 0d | 2015-12-18 | 2015-12-18 | 8, 5 |  |  | 3d | 0d |  |  |  |  |  |  |
| 10 | 7 | **3. Réalisation noyau minimal fonctionnel** |  | 8d | 2015-12-17 A | 2016-01-19 | 9 | 74% | 2.05d | 0d |  |  |  | 112h | 77.7h | 2,400 | 1,665 |
| 11 | 7.1 | 3.1 Transcription de l'algorithme |  | 1d | 2015-12-21 A | 2015-12-21 | 9 | 80% | 0.2d | 5d |  |  | Adrien; Lydie | 14h | 11.2h | 300 | 240 |
| 12 | 7.2 | 3.2 Rendu 3D |  | 5d | 2015-12-22 A | 2016-01-19 A | 11 | 100% |  |  |  |  | Adrien | 35h | 35h | 750 | 750 |
| 13 | 7.3 | 3.3 Implémentation des classes |  | 5d | 2015-12-17 A | 2016-01-18 | 9 | 48% | 2.62d | 1.25d |  | finish no earlier than 2015-12-21 | Lydie; Thomas | 63h | 31.5h | 1,350 | 675 |
| 14 | 8 | **4. Interface minimale** |  | 4.8d | 2015-12-21 A | 2016-01-18 | 9 | 38% | 3d | 1.2d |  |  |  | 33.6h | 12.6h | 720 | 270 |
| 15 | 8.1 | 4.1 Développement espace 3D |  | 1.8d | 2015-12-21 A | 2015-12-22 A | 9 | 100% |  |  |  |  | Zied | 12.6h | 12.6h | 270 | 270 |
| 16 | 8.2 | 4.2 Développement espace 2D |  | 2d | 2015-12-22 | 2015-12-24 | 15 |  |  | 1.2d | 0d |  | Zied | 14h |  | 300 |  |
| 17 | 8.3 | 4.3 Menus (non liés) |  | 1d | 2015-12-24 | 2016-01-18 | 16 |  |  | 1.2d |  |  | Zied | 7h |  | 150 |  |
| 18 | 9 | D. Jalon Noyau fonctionnel minimal | milestone | 0d | 2016-01-19 | 2016-01-19 | 17, 12, 13, 10, 14 |  |  | 0d |  |  |  |  |  |  |  |
| 19 | 10 | **5. Amélioration IHM Choix des courbes** |  | 3d | 2016-01-20 | 2016-01-22 | 18 |  |  | 0d |  |  |  | 21h |  | 450 |  |
| 20 | 10.1 | 5.1 Choix des courbes |  | 1d | 2016-01-20 | 2016-01-20 | 18 |  |  | 0d |  |  | Zied | 7h |  | 150 |  |
| 21 | 10.2 | 5.2 Prise en compte des demandes |  | 2d | 2016-01-21 | 2016-01-22 | 20 |  |  | 0d |  |  | Zied | 14h |  | 300 |  |
| 22 | 11 | **6. Ajout fonctionnalités** |  | 3d | 2016-01-20 | 2016-01-22 | 18 |  |  | 0d |  |  |  | 56h |  | 1,200 |  |
| 23 | 11.1 | 6.1 Ajout de méridiennes |  | 1.5d | 2016-01-20 | 2016-01-21 | 18 |  |  | 0d |  |  | Lydie; Adrien | 21h |  | 450 |  |
| 24 | 11.2 | 6.2 Ajout de courbes de révolution |  | 1.5d | 2016-01-21 | 2016-01-22 | 23 |  |  | 0d |  |  | Adrien; Lydie | 21h |  | 450 |  |
| 25 | 11.3 | 6.3 Plans et Coupes |  | 1d | 2016-01-20 | 2016-01-20 | 18 |  |  | 1d | 0d |  | Thomas | 7h |  | 150 |  |
| 26 | 11.4 | 6.4 Caméra |  | 1d | 2016-01-21 | 2016-01-21 | 25 |  |  | 1d |  |  | Thomas | 7h |  | 150 |  |
| 27 | 12 | E. Jalon Application minimale | milestone | 0d | 2016-01-22 | 2016-01-22 | 19, 22, 26, 21, 24 |  |  | 0d |  |  |  |  |  |  |  |

Notes:
- 4: Tâche générique, réalisée par tout les membres du groupes

| ID | WBS | Task | Type | Duration | Start | Finish | Predecessors | Total slack | Free slack | Constraint | Resources | Work | Cost |
| --- | --- | --- | --- | --- | --- | --- | --- | --- | --- | --- | --- | --- | --- |
| 28 | 13 | **7. Amélioration IHM Paramètres** |  | 6d | 2016-01-25 | 2016-02-15 | 27 | 0d |  |  |  | 42h | 900 |
| 29 | 13.1 | 7.1 Prise en compte des demandes |  | 2d | 2016-01-25 | 2016-01-26 | 27 | 0d |  |  | Zied | 14h | 300 |
| 30 | 13.2 | 7.2 Paramètres simples |  | 4d | 2016-01-27 | 2016-02-15 | 29 | 0d |  |  | Zied | 28h | 600 |
| 31 | 14 | **8. Dessin à main levée méridienne** |  | 4d | 2016-01-25 | 2016-01-28 | 27 | 2d |  |  |  | 56h | 1,200 |
| 32 | 14.1 | 8.1 Implémentation algorithme main levée |  | 1d | 2016-01-25 | 2016-01-25 | 27 | 2d | 0d |  | Lydie; Adrien | 14h | 300 |
| 33 | 14.2 | 8.2 Implantation dessin 2D |  | 2d | 2016-01-26 | 2016-01-27 | 32 | 2d | 0d |  | Lydie; Adrien | 28h | 600 |
| 34 | 14.3 | 8.3 Lien Dessin/Algorithme |  | 1d | 2016-01-28 | 2016-01-28 | 33 | 2d |  |  | Adrien; Lydie | 14h | 300 |
| 35 | 15 | F. Jalon Dessin main levée | milestone | 0d | 2016-02-15 | 2016-02-15 | 28, 31, 30, 34 | 0d |  |  |  |  |  |
| 36 | 16 | **9. Gestions de données** |  | 4d | 2016-02-16 | 2016-02-19 | 35 | 2d |  |  |  | 28h | 600 |
| 37 | 16.1 | 9.1 Export de l'espace 3D |  | 3d | 2016-02-16 | 2016-02-18 | 35 | 2d | 0d |  | Adrien | 21h | 450 |
| 38 | 16.2 | 9.2 Sauvegarde/Chargement des courbes |  | 1d | 2016-02-19 | 2016-02-19 | 37 | 2d |  |  | Thomas | 7h | 150 |
| 39 | 17 | **10. Amélioration de l'IHM Rentrer des formules** |  | 6d | 2016-02-16 | 2016-02-23 | 35 | 0d |  |  |  | 77h | 1,650 |
| 40 | 17.1 | 10.1 Prise en compte des demandes |  | 1d | 2016-02-16 | 2016-02-16 | 35 | 0d |  |  | Zied; Lydie | 14h | 300 |
| 41 | 17.2 | 10.2 Paramètres avancés |  | 4d | 2016-02-17 | 2016-02-22 | 40 | 1d |  |  | Zied | 28h | 600 |
| 42 | 17.3 | 10.3 Rentrer des formules |  | 5d | 2016-02-17 | 2016-02-23 | 40 | 0d |  |  | Lydie | 35h | 750 |
| 43 | 18 | G. Jalon Ajout de formules | milestone | 0d | 2016-02-23 | 2016-02-23 | 42, 36, 39, 38, 41 | 0d |  |  |  |  |  |
| 44 | 19 | 11. Ajout des courbes par l'utilisateur |  | 4d | 2016-02-24 | 2016-03-07 | 43 | 0d |  | finish no earlier than 2016-03-02 | Zied; Thomas; Adrien; Lydie | 112h | 2,400 |
| 45 | 20 | H. Jalon fin développement | milestone | 0d | 2016-03-07 | 2016-03-07 | 44 | 0d |  |  |  |  |  |
| 46 | 21 | 12. Rédaction rapport technique et finalisation documentation |  | 9d | 2016-03-08 | 2016-03-18 | 45 | 0d |  |  | Zied; Thomas; Adrien; Lydie | 252h | 5,400 |
| 47 | 22 | I. Jalon fin projet | milestone | 0d | 2016-03-18 | 2016-03-18 | 46, 4 | 0d |  |  |  |  |  |
